# 1.Introducir la información de las fases y las tareas en un nuevo archivo de proyecto

How a schedule from MS Project changed from version to version. A marks actual dates.

## Version 1 (saved 2013-04-09, file Proyecto1.mpp)

Note of the change: Primer Commit

| ID | Task | Duration | Start | Finish |
| --- | --- | --- | --- | --- |
| 1 | TOTAL PROYECTO | 1d | 2013-04-04 | 2013-04-04 |
| 2 | FASE 1ª PREPARACION PARA LA FORMULACION | 1d | 2013-04-04 | 2013-04-04 |
| 3 | INICIO | 1d | 2013-04-04 | 2013-04-04 |
| 4 | TERMINOS DE REFERENCIA. Objetivos. Condicionantes del Promotor | 1d | 2013-04-04 | 2013-04-04 |
| 5 | FINANCIACION | 1d | 2013-04-04 | 2013-04-04 |
| 6 | COMITÉ DE COORDINACION. Constitución y organización | 1d | 2013-04-04 | 2013-04-04 |
| 7 | EQUIPO DE FORMULACION. Recursos humanos y técnicos | 1d | 2013-04-04 | 2013-04-04 |
| 8 | METODOLOGIA Y PLAN DE TRABAJO | 1d | 2013-04-04 | 2013-04-04 |
| 9 | DOC. Nº1: Fin P.F. | 1d | 2013-04-04 | 2013-04-04 |
| 10 | Entrega al PROMOTOR. Doc. nº1 | 1d | 2013-04-04 | 2013-04-04 |
| 11 | SEMINARIO DE LANZAMIENTO DEL PROYECTO | 1d | 2013-04-04 | 2013-04-04 |
| 12 | FASE 2: ANALISIS Y DIAGNOSTICO | 1d | 2013-04-04 | 2013-04-04 |
| 13 | ANALISIS ANTECEDENTES | 1d | 2013-04-04 | 2013-04-04 |
| 14 | POLITICAS Y PROGRAMAS | 1d | 2013-04-04 | 2013-04-04 |
| 15 | MARCO LEGAL | 1d | 2013-04-04 | 2013-04-04 |
| 16 | BASES DE DATOS EXISTENTES | 1d | 2013-04-04 | 2013-04-04 |
| 17 | ANALISIS DEL AREA DEL PROYECTO | 1d | 2013-04-04 | 2013-04-04 |
| 18 | ANALISIS DE RECURSOS NATURALES. INVENTARIO AMBIENTAL | 1d | 2013-04-04 | 2013-04-04 |
| 19 | INFRAESTRUCTURAS Y SERVICIOS | 1d | 2013-04-04 | 2013-04-04 |
| 20 | ANALISIS DE SECTORES PRODUCTIVOS | 1d | 2013-04-04 | 2013-04-04 |
| 21 | ANALISIS POBLACIONAL | 1d | 2013-04-04 | 2013-04-04 |
| 22 | SISTEMA GENERAL TERRITORIAL DE INFORMACION | 1d | 2013-04-04 | 2013-04-04 |
| 23 | ANALISIS DE AGENTES Y PARTICIPACION | 1d | 2013-04-04 | 2013-04-04 |
| 24 | IDENTIFICACIÓN DE AGENTES Y TIPOLOGIA | 1d | 2013-04-04 | 2013-04-04 |
| 25 | ANALISIS DE LA PARTICIPACIÓN: ENCUESTA CON LOS AGENTES | 1d | 2013-04-04 | 2013-04-04 |
| 26 | TALLER DE PARTICIPACIÓN AGENTES PUBLICOS | 1d | 2013-04-04 | 2013-04-04 |
| 27 | ANALISIS PROSPECTIVO SIN | 1d | 2013-04-04 | 2013-04-04 |
| 28 | INFORME DE PARTICIPACION: Problemas, necesidades, oportunidades | 1d | 2013-04-04 | 2013-04-04 |
| 29 | PRESENTACIÓN Y VALIDACION DE CONCLUSIONES | 1d | 2013-04-04 | 2013-04-04 |
| 30 | CONCLUSIONES Y Doc. Nº2. Presentación al PROMOTOR | 1d | 2013-04-04 | 2013-04-04 |
| 31 | Doc. nº2. REVISIÓN POR EL PROMOTOR | 1d | 2013-04-04 | 2013-04-04 |
| 32 | FASE 3: DISEÑO DEL PROYECTO | 1d | 2013-04-04 | 2013-04-04 |
| 33 | OBJETIVOS Y METAS | 1d | 2013-04-04 | 2013-04-04 |
| 34 | ALTERNATIVA ESTRATEGICAS: ANÁLISIS Y SELECCIÓN | 1d | 2013-04-04 | 2013-04-04 |
| 35 | FORMULACION DE LOS COMPONENTES | 1d | 2013-04-04 | 2013-04-04 |
| 36 | DISEÑO DE LA ORGANIZACIÓN | 1d | 2013-04-04 | 2013-04-04 |
| 37 | SISTEMA DE SEGUIMIENTO Y EVALUACION. Programación de la ejecución. | 1d | 2013-04-04 | 2013-04-04 |
| 38 | PRESUPUESTACION | 1d | 2013-04-04 | 2013-04-04 |
| 39 | Doc. Nº 3. Entrega al PROMOTOR | 1d | 2013-04-04 | 2013-04-04 |
| 40 | Doc. Nº 3. REVISION POR EL PROMOTOR | 1d | 2013-04-04 | 2013-04-04 |
| 41 | FASE 4: EVALUACION MULTICRITERIO | 1d | 2013-04-04 | 2013-04-04 |
| 42 | EVALUACION ECONOMICO-FINANCIERA | 1d | 2013-04-04 | 2013-04-04 |
| 43 | EVALUACION SOCIAL Y CULTURAL | 1d | 2013-04-04 | 2013-04-04 |
| 44 | EVALUACION AMBIENTAL | 1d | 2013-04-04 | 2013-04-04 |
| 45 | EVALUACION DE RIESGOS, SEGURIDAD Y SALUD DEL PROYECTO | 1d | 2013-04-04 | 2013-04-04 |
| 46 | Entrega Doc. nº 4. VIABILIDAD Y SOSTENIBLIDAD | 1d | 2013-04-04 | 2013-04-04 |
| 47 | Revisión Doc. nº 4 | 1d | 2013-04-04 | 2013-04-04 |
| 48 | FAE 5: DOCUMENTACION | 1d | 2013-04-04 | 2013-04-04 |
| 49 | MEMORIA | 1d | 2013-04-04 | 2013-04-04 |
| 50 | ANEJOS A LA MEMORIA | 1d | 2013-04-04 | 2013-04-04 |
| 51 | PLANOS | 1d | 2013-04-04 | 2013-04-04 |
| 52 | PLIEGO DE CONDICIONES | 1d | 2013-04-04 | 2013-04-04 |
| 53 | PRESUPUESTO | 1d | 2013-04-04 | 2013-04-04 |
| 54 | ESTUDIO DE SEGURIDAD Y SALUD | 1d | 2013-04-04 | 2013-04-04 |
| 55 | Entrega del proyecto | 1d | 2013-04-04 | 2013-04-04 |

## Version 2 (saved 2013-04-09, file 2. Mostrar la organización del proyecto mediante códigos de estructura de descomposición del trabajo (EDT).mpp)

Note of the change: Segundo Commit

Last finish stays 2013-04-04.

Changed:

| ID | Task | Other |
| --- | --- | --- |
| 48 | **FASE 5: DOCUMENTACION** | was named FAE 5: DOCUMENTACION |

## Version 3 (data date 2013-03-22, saved 2013-04-09, file 3. Crear la programación introduciendo las duraciones estimadas para las tareas y las dependencias de tareas.mpp)

Note of the change: Tercer Commit

Last finish 2013-04-04 → 2014-03-05 (+335d).

Changed:

| ID | Task | Start | Finish | Duration | Predecessors |
| --- | --- | --- | --- | --- | --- |
| 1 | **TOTAL PROYECTO** | 2013-04-04 → 2013-03-22 (-13d) | 2013-04-04 → 2014-02-24 (+326d) | 1d → 242d |  |
| 2 | **FASE 1ª PREPARACION PARA LA FORMULACION** | 2013-04-04 → 2013-03-22 (-13d) | 2013-04-04 → 2013-05-03 (+29d) | 1d → 31d |  |
| 3 | INICIO | 2013-04-04 → 2013-03-22 (-13d) | 2013-04-04 → 2013-03-22 (-13d) | 1d → 0d |  |
| 4 | TERMINOS DE REFERENCIA. Objetivos. Condicionantes del Promotor | 2013-04-04 → 2013-04-01 (-3d) | 2013-04-04 → 2013-04-12 (+8d) | 1d → 10d | none → 3 |
| 5 | FINANCIACION | 2013-04-04 → 2013-04-01 (-3d) | 2013-04-04 → 2013-04-09 (+5d) | 1d → 7d | none → 3 |
| 6 | COMITÉ DE COORDINACION. Constitución y organización | 2013-04-04 → 2013-04-01 (-3d) | 2013-04-04 → 2013-04-05 (+1d) | 1d → 5d | none → 3 |
| 7 | EQUIPO DE FORMULACION. Recursos humanos y técnicos | 2013-04-04 → 2013-04-08 (+4d) | 2013-04-04 → 2013-04-26 (+22d) | 1d → 15d | none → 4SS, 6 |
| 8 | METODOLOGIA Y PLAN DE TRABAJO | 2013-04-04 → 2013-04-22 (+18d) | 2013-04-04 → 2013-05-03 (+29d) | 1d → 10d | none → 7FS-5d, 5, 4, 6SS |
| 9 | DOC. Nº1: Fin P.F. | 2013-04-04 → 2013-05-06 (+32d) | 2013-04-04 → 2013-05-10 (+36d) | 1d → 5d | none → 8 |
| 10 | Entrega al PROMOTOR. Doc. nº1 | 2013-04-04 → 2013-05-13 (+39d) | 2013-04-04 → 2013-05-13 (+39d) | 1d → 0d | none → 9 |
| 11 | SEMINARIO DE LANZAMIENTO DEL PROYECTO | 2013-04-04 → 2013-05-13 (+39d) | 2013-04-04 → 2013-05-13 (+39d) |  | none → 10 |
| 12 | **FASE 2: ANALISIS Y DIAGNOSTICO** | 2013-04-04 → 2013-03-22 (-13d) | 2013-04-04 → 2013-07-31 (+118d) | 1d → 94d |  |
| 13 | **ANALISIS ANTECEDENTES** | 2013-04-04 → 2013-05-14 (+40d) | 2013-04-04 → 2013-06-03 (+60d) | 1d → 15d | none → 11 |
| 14 | POLITICAS Y PROGRAMAS | 2013-04-04 → 2013-05-14 (+40d) | 2013-04-04 → 2013-05-27 (+53d) | 1d → 10d | none → 11 |
| 15 | MARCO LEGAL | 2013-04-04 → 2013-05-14 (+40d) | 2013-04-04 → 2013-06-03 (+60d) | 1d → 15d | none → 11 |
| 16 | BASES DE DATOS EXISTENTES | 2013-04-04 → 2013-05-14 (+40d) | 2013-04-04 → 2013-05-22 (+48d) | 1d → 7d | none → 11 |
| 17 | **ANALISIS DEL AREA DEL PROYECTO** | 2013-04-04 → 2013-05-23 (+49d) | 2013-04-04 → 2013-09-11 (+160d) | 1d → 80d | none → 11, 16 |
| 18 | ANALISIS DE RECURSOS NATURALES. INVENTARIO AMBIENTAL | 2013-04-04 → 2013-03-31 (-4d) | 2013-04-04 → 2013-05-16 (+42d) | 1d → 35d |  |
| 19 | INFRAESTRUCTURAS Y SERVICIOS | 2013-04-04 → 2013-05-17 (+43d) | 2013-04-04 → 2013-06-13 (+70d) | 1d → 20d | none → 18 |
| 20 | ANALISIS DE SECTORES PRODUCTIVOS | 2013-04-04 → 2013-06-14 (+71d) | 2013-04-04 → 2013-07-18 (+105d) | 1d → 25d | none → 14, 13, 15, 19 |
| 21 | ANALISIS POBLACIONAL | 2013-04-04 → 2013-05-23 (+49d) | 2013-04-04 → 2013-06-19 (+76d) | 1d → 20d |  |
| 22 | SISTEMA GENERAL TERRITORIAL DE INFORMACION | 2013-04-04 → 2013-05-23 (+49d) | 2013-04-04 → 2013-06-20 (+77d) | 1d → 21d | none → 16 |
| 23 | **ANALISIS DE AGENTES Y PARTICIPACION** | 2013-04-04 → 2013-03-22 (-13d) | 2013-04-04 → 2013-07-15 (+102d) | 1d → 82d |  |
| 24 | IDENTIFICACIÓN DE AGENTES Y TIPOLOGIA | 2013-04-04 → 2013-05-30 (+56d) | 2013-04-04 → 2013-06-12 (+69d) | 1d → 10d | none → 22SS+5d |
| 25 | ANALISIS DE LA PARTICIPACIÓN: ENCUESTA CON LOS AGENTES | 2013-04-04 → 2013-06-13 (+70d) | 2013-04-04 → 2013-09-04 (+153d) | 1d → 60d | none → 24 |
| 26 | TALLER DE PARTICIPACIÓN AGENTES PUBLICOS | 2013-04-04 → 2013-06-06 (+63d) | 2013-04-04 → 2013-06-06 (+63d) |  | none → 22SS+10d |
| 27 | ANALISIS PROSPECTIVO SIN | 2013-04-04 → 2013-06-07 (+64d) | 2013-04-04 → 2013-06-14 (+71d) | 1d → 6d | none → 26 |
| 28 | INFORME DE PARTICIPACION: Problemas, necesidades, oportunidades | 2013-04-04 → 2013-09-05 (+154d) | 2013-04-04 → 2013-09-18 (+167d) | 1d → 10d | none → 27, 25 |
| 29 | PRESENTACIÓN Y VALIDACION DE CONCLUSIONES | 2013-04-04 → 2013-09-19 (+168d) | 2013-04-04 → 2013-09-20 (+169d) | 1d → 2d | none → 28 |
| 30 | CONCLUSIONES Y Doc. Nº2. Presentación al PROMOTOR | 2013-04-04 → 2013-09-23 (+172d) | 2013-04-04 → 2013-09-23 (+172d) | 1d → 0d | none → 29 |
| 31 | Doc. nº2. REVISIÓN POR EL PROMOTOR | 2013-04-04 → 2013-09-23 (+172d) | 2013-04-04 → 2013-09-23 (+172d) | 1d → 0d | none → 29, 30 |
| 32 | **FASE 3: DISEÑO DEL PROYECTO** | 2013-04-04 → 2013-03-22 (-13d) | 2013-04-04 → 2013-07-29 (+116d) | 1d → 92d |  |
| 33 | OBJETIVOS Y METAS | 2013-04-04 → 2013-09-23 (+172d) | 2013-04-04 → 2013-09-23 (+172d) |  | none → 31 |
| 34 | ALTERNATIVA ESTRATEGICAS: ANÁLISIS Y SELECCIÓN | 2013-04-04 → 2013-09-24 (+173d) | 2013-04-04 → 2013-10-02 (+181d) | 1d → 7d | none → 33 |
| 35 | FORMULACION DE LOS COMPONENTES | 2013-04-04 → 2013-10-03 (+182d) | 2013-04-04 → 2013-12-25 (+265d) | 1d → 60d | none → 34 |
| 36 | DISEÑO DE LA ORGANIZACIÓN | 2013-04-04 → 2013-12-26 (+266d) | 2013-04-04 → 2014-01-08 (+279d) | 1d → 10d | none → 35 |
| 37 | SISTEMA DE SEGUIMIENTO Y EVALUACION. Programación de la ejecución. | 2013-04-04 → 2013-12-26 (+266d) | 2013-04-04 → 2014-01-03 (+274d) | 1d → 7d | none → 26, 35 |
| 38 | PRESUPUESTACION | 2013-04-04 → 2014-01-09 (+280d) | 2013-04-04 → 2014-01-14 (+285d) | 1d → 4d | none → 35, 36 |
| 39 | Doc. Nº 3. Entrega al PROMOTOR | 2013-04-04 → 2014-01-15 (+286d) | 2013-04-04 → 2014-01-15 (+286d) | 1d → 0d | none → 38 |
| 40 | Doc. Nº 3. REVISION POR EL PROMOTOR | 2013-04-04 → 2014-01-15 (+286d) | 2013-04-04 → 2014-01-28 (+299d) | 1d → 10d | none → 39 |
| 41 | **FASE 4: EVALUACION MULTICRITERIO** | 2013-04-04 → 2013-03-22 (-13d) | 2013-04-04 → 2013-04-11 (+7d) | 1d → 15d |  |
| 42 | EVALUACION ECONOMICO-FINANCIERA | 2013-04-04 → 2014-01-29 (+300d) | 2013-04-04 → 2014-02-11 (+313d) | 1d → 10d | none → 40 |
| 43 | EVALUACION SOCIAL Y CULTURAL | 2013-04-04 → 2014-01-29 (+300d) | 2013-04-04 → 2014-02-11 (+313d) | 1d → 10d | none → 40 |
| 44 | EVALUACION AMBIENTAL | 2013-04-04 → 2014-01-29 (+300d) | 2013-04-04 → 2014-02-11 (+313d) | 1d → 10d | none → 40 |
| 45 | EVALUACION DE RIESGOS, SEGURIDAD Y SALUD DEL PROYECTO | 2013-04-04 → 2014-01-29 (+300d) | 2013-04-04 → 2014-02-11 (+313d) | 1d → 10d | none → 40 |
| 46 | Entrega Doc. nº 4. VIABILIDAD Y SOSTENIBLIDAD | 2013-04-04 → 2014-02-12 (+314d) | 2013-04-04 → 2014-02-12 (+314d) | 1d → 0d | none → 45 |
| 47 | Revisión Doc. nº 4 | 2013-04-04 → 2014-02-12 (+314d) | 2013-04-04 → 2014-02-18 (+320d) | 1d → 5d | none → 42, 43, 44 |
| 48 | **FASE 5: DOCUMENTACION** | 2013-04-04 → 2013-03-22 (-13d) | 2013-04-04 → 2013-04-11 (+7d) | 1d → 15d |  |
| 49 | MEMORIA | 2013-04-04 → 2014-02-19 (+321d) | 2013-04-04 → 2014-02-26 (+328d) | 1d → 6d | none → 47 |
| 50 | ANEJOS A LA MEMORIA | 2013-04-04 → 2014-02-19 (+321d) | 2013-04-04 → 2014-03-04 (+334d) | 1d → 10d | none → 47 |
| 51 | PLANOS | 2013-04-04 → 2014-02-19 (+321d) | 2013-04-04 → 2014-03-04 (+334d) | 1d → 10d | none → 47 |
| 52 | PLIEGO DE CONDICIONES | 2013-04-04 → 2014-02-19 (+321d) | 2013-04-04 → 2014-02-21 (+323d) | 1d → 3d | none → 47 |
| 53 | PRESUPUESTO | 2013-04-04 → 2014-02-19 (+321d) | 2013-04-04 → 2014-02-21 (+323d) | 1d → 3d | none → 47 |
| 54 | ESTUDIO DE SEGURIDAD Y SALUD | 2013-04-04 → 2014-02-19 (+321d) | 2013-04-04 → 2014-03-04 (+334d) | 1d → 10d | none → 47 |
| 55 | Entrega del proyecto | 2013-04-04 → 2014-03-05 (+335d) | 2013-04-04 → 2014-03-05 (+335d) | 1d → 0d | none → 51, 49, 50, 52, 53, 54 |

## Version 4 (data date 2013-03-22, saved 2013-04-09, file 5. Asignar los recursos a las tareas una vez integrada la información sobre los recursos en el proyecto (Herramientas-asignar recursos).mpp)

Note of the change: Quinto Commit

Last finish 2014-03-05 → 2014-03-28 (+23d).

Changed:

| ID | Task | Finish | Duration | Other |
| --- | --- | --- | --- | --- |
| 3 | INICIO |  |  | resources none → DIRECTOR PROYECTO |
| 4 | TERMINOS DE REFERENCIA. Objetivos. Condicionantes del Promotor |  |  | resources none → DIRECTOR PROYECTO [25%]; ECONOMISTA [50%]; INGENIERO AGRONOMO [25%]; SOCIOLOGO [25%]; INGENIERO EN MEDIOAMBIENTE [25%] |
| 5 | FINANCIACION |  |  | resources none → DIRECTOR PROYECTO [15%]; ECONOMISTA [50%]; INGENIERO AGRONOMO [25%]; SOCIOLOGO [25%] |
| 6 | COMITÉ DE COORDINACION. Constitución y organización |  |  | resources none → DIRECTOR PROYECTO [25%] |
| 7 | EQUIPO DE FORMULACION. Recursos humanos y técnicos | 2013-04-26 → 2013-04-30 (+4d) | 15d → 17d | resources none → ADMINISTRATIVO [10%]; DIRECTOR PROYECTO [25%]; ECONOMISTA [20%]; INGENIERO AGRONOMO [10%]; INGENIERO EN MEDIOAMBIENTE [10%]; SOCIOLOGO [10%] |
| 8 | METODOLOGIA Y PLAN DE TRABAJO |  |  | resources none → ADMINISTRATIVO [50%]; DIRECTOR PROYECTO [50%]; ECONOMISTA [50%]; INGENIERO AGRONOMO [50%]; INGENIERO EN MEDIOAMBIENTE [50%]; SOCIOLOGO [50%] |
| 9 | DOC. Nº1: Fin P.F. | 2013-05-10 → 2013-05-06 (-4d) | 5d → 0d | resources none → ADMINISTRATIVO; DIRECTOR PROYECTO [50%]; ECONOMISTA [50%]; INGENIERO AGRONOMO [20%]; INGENIERO EN MEDIOAMBIENTE [20%]; SOCIOLOGO [20%] |
| 10 | Entrega al PROMOTOR. Doc. nº1 |  |  | resources none → DIRECTOR PROYECTO [50%] |
| 11 | SEMINARIO DE LANZAMIENTO DEL PROYECTO |  | 1d → 0d | resources none → ADMINISTRATIVO; DIRECTOR PROYECTO; ECONOMISTA; INGENIERO AGRONOMO; INGENIERO EN MEDIOAMBIENTE; SOCIOLOGO |
| 14 | POLITICAS Y PROGRAMAS | 2013-05-27 → 2013-06-05 (+9d) | 10d → 17d | resources none → ADMINISTRATIVO [20%]; DIRECTOR PROYECTO [20%]; ECONOMISTA [40%]; INGENIERO AGRONOMO [50%]; INGENIERO EN MEDIOAMBIENTE [20%] |
| 15 | MARCO LEGAL |  |  | resources none → ADMINISTRATIVO [50%]; DIRECTOR PROYECTO [20%]; ECONOMISTA [40%]; INGENIERO AGRONOMO [20%] |
| 16 | BASES DE DATOS EXISTENTES |  |  | resources none → DIRECTOR PROYECTO [20%]; INGENIERO AGRONOMO [50%] |
| 18 | ANALISIS DE RECURSOS NATURALES. INVENTARIO AMBIENTAL | 2013-05-16 → 2013-07-04 (+49d) | 35d → 63d | resources none → ADMINISTRATIVO [20%]; ECONOMISTA [40%]; EXPERTO GIS [50%]; INGENIERO AGRONOMO [50%]; INGENIERO EN MEDIOAMBIENTE |
| 19 | INFRAESTRUCTURAS Y SERVICIOS | 2013-06-13 → 2013-06-19 (+6d) | 20d → 24d | resources none → ADMINISTRATIVO [25%]; DIRECTOR PROYECTO [10%]; INGENIERO AGRONOMO; SOCIOLOGO [50%] |
| 20 | ANALISIS DE SECTORES PRODUCTIVOS | 2013-07-18 → 2013-08-08 (+21d) | 25d → 40d | resources none → ADMINISTRATIVO [50%]; DIRECTOR PROYECTO [20%]; ECONOMISTA; INGENIERO AGRONOMO [50%] |
| 21 | ANALISIS POBLACIONAL |  |  | resources none → ADMINISTRATIVO [25%]; INGENIERO AGRONOMO [25%]; SOCIOLOGO |
| 22 | SISTEMA GENERAL TERRITORIAL DE INFORMACION | 2013-06-20 → 2013-06-25 (+5d) | 21d → 24d | resources none → ADMINISTRATIVO [25%]; EXPERTO GIS; INGENIERO AGRONOMO [25%]; SOCIOLOGO |
| 24 | IDENTIFICACIÓN DE AGENTES Y TIPOLOGIA | 2013-06-12 → 2013-06-19 (+7d) | 10d → 15d | resources none → ADMINISTRATIVO [25%]; DIRECTOR PROYECTO [50%]; INGENIERO AGRONOMO [50%]; SOCIOLOGO |
| 25 | ANALISIS DE LA PARTICIPACIÓN: ENCUESTA CON LOS AGENTES | 2013-09-04 → 2013-09-12 (+8d) | 60d → 66d | resources none → ADMINISTRATIVO [25%]; DIRECTOR PROYECTO [50%]; INGENIERO AGRONOMO [50%]; SOCIOLOGO |
| 26 | TALLER DE PARTICIPACIÓN AGENTES PUBLICOS | 2013-06-06 → 2013-06-20 (+14d) | 1d → 2d | resources none → ADMINISTRATIVO [50%]; DIRECTOR PROYECTO [15%]; INGENIERO AGRONOMO [50%]; SOCIOLOGO |
| 27 | ANALISIS PROSPECTIVO SIN |  |  | resources none → DIRECTOR PROYECTO [15%]; ECONOMISTA [50%]; INGENIERO AGRONOMO [25%]; INGENIERO EN MEDIOAMBIENTE [25%]; SOCIOLOGO [25%] |
| 28 | INFORME DE PARTICIPACION: Problemas, necesidades, oportunidades |  |  | resources none → ADMINISTRATIVO [50%]; DIRECTOR PROYECTO [30%]; ECONOMISTA [50%]; INGENIERO AGRONOMO [25%]; INGENIERO EN MEDIOAMBIENTE [25%]; SOCIOLOGO [25%] |
| 29 | PRESENTACIÓN Y VALIDACION DE CONCLUSIONES |  |  | resources none → ADMINISTRATIVO [25%]; DIRECTOR PROYECTO [25%]; ECONOMISTA [20%]; INGENIERO AGRONOMO [10%]; SOCIOLOGO [10%] |
| 30 | CONCLUSIONES Y Doc. Nº2. Presentación al PROMOTOR |  |  | resources none → ADMINISTRATIVO; DIRECTOR PROYECTO [50%]; ECONOMISTA [50%]; INGENIERO AGRONOMO [25%]; INGENIERO EN MEDIOAMBIENTE [20%] |
| 33 | OBJETIVOS Y METAS |  | 1d → 0d | resources none → DIRECTOR PROYECTO; INGENIERO AGRONOMO [50%] |
| 34 | ALTERNATIVA ESTRATEGICAS: ANÁLISIS Y SELECCIÓN |  |  | resources none → DIRECTOR PROYECTO [50%]; ECONOMISTA; INGENIERO AGRONOMO; INGENIERO EN MEDIOAMBIENTE [50%] |
| 35 | FORMULACION DE LOS COMPONENTES |  |  | resources none → ECONOMISTA [50%]; INGENIERO AGRONOMO [50%]; INGENIERO EN MEDIOAMBIENTE [50%] |
| 36 | DISEÑO DE LA ORGANIZACIÓN |  |  | resources none → ECONOMISTA [50%]; INGENIERO AGRONOMO [50%]; INGENIERO EN MEDIOAMBIENTE [50%] |
| 37 | SISTEMA DE SEGUIMIENTO Y EVALUACION. Programación de la ejecución. |  |  | resources none → ECONOMISTA [50%]; INGENIERO AGRONOMO [50%]; INGENIERO EN MEDIOAMBIENTE [50%] |
| 38 | PRESUPUESTACION |  |  | resources none → ECONOMISTA [50%]; INGENIERO AGRONOMO [50%]; INGENIERO EN MEDIOAMBIENTE [50%] |
| 39 | Doc. Nº 3. Entrega al PROMOTOR |  |  | resources none → DIRECTOR PROYECTO |
| 42 | EVALUACION ECONOMICO-FINANCIERA |  |  | resources none → DIRECTOR PROYECTO [25%]; ECONOMISTA [50%]; INGENIERO AGRONOMO |
| 43 | EVALUACION SOCIAL Y CULTURAL |  |  | resources none → DIRECTOR PROYECTO [25%]; ECONOMISTA [15%]; INGENIERO AGRONOMO [50%]; SOCIOLOGO |
| 44 | EVALUACION AMBIENTAL |  |  | resources none → DIRECTOR PROYECTO [25%]; ECONOMISTA [15%]; INGENIERO AGRONOMO [50%]; INGENIERO EN MEDIOAMBIENTE |
| 45 | EVALUACION DE RIESGOS, SEGURIDAD Y SALUD DEL PROYECTO | 2014-02-11 → 2014-02-28 (+17d) | 10d → 20d | resources none → DIRECTOR PROYECTO [25%]; ECONOMISTA [15%]; INGENIERO AGRONOMO [50%]; TECNICOS DE APOYO |
| 49 | MEMORIA | 2014-02-26 → 2014-03-03 (+5d) | 6d → 9d | resources none → DIRECTOR PROYECTO [10%]; ECONOMISTA [25%]; INGENIERO AGRONOMO [50%]; TECNICOS DE APOYO |
| 50 | ANEJOS A LA MEMORIA | 2014-03-04 → 2014-03-28 (+24d) | 10d → 22d | resources none → ADMINISTRATIVO [50%]; DIRECTOR PROYECTO [10%]; ECONOMISTA [25%]; INGENIERO AGRONOMO [50%]; INGENIERO EN MEDIOAMBIENTE [50%]; TECNICOS DE APOYO |
| 51 | PLANOS | 2014-03-04 → 2014-03-17 (+13d) | 10d → 19d | resources none → ADMINISTRATIVO [50%]; DIRECTOR PROYECTO [10%]; ECONOMISTA [25%]; INGENIERO AGRONOMO [50%]; INGENIERO EN MEDIOAMBIENTE [50%]; TECNICOS DE APOYO |
| 52 | PLIEGO DE CONDICIONES |  |  | resources none → ADMINISTRATIVO [50%]; DIRECTOR PROYECTO [10%]; ECONOMISTA [25%]; INGENIERO AGRONOMO [50%]; INGENIERO EN MEDIOAMBIENTE [50%]; TECNICOS DE APOYO |
| 53 | PRESUPUESTO |  |  | resources none → ADMINISTRATIVO [50%]; DIRECTOR PROYECTO [10%]; ECONOMISTA [25%]; INGENIERO AGRONOMO [50%]; INGENIERO EN MEDIOAMBIENTE [50%]; TECNICOS DE APOYO |
| 54 | ESTUDIO DE SEGURIDAD Y SALUD | 2014-03-04 → 2014-03-21 (+17d) | 10d → 23d | resources none → ADMINISTRATIVO [50%]; DIRECTOR PROYECTO [10%]; ECONOMISTA [25%]; INGENIERO AGRONOMO [50%]; INGENIERO EN MEDIOAMBIENTE [50%]; TECNICOS DE APOYO |

## Version 5 (data date 2013-03-22, saved 2013-04-13, file 8. Optimizar el plan del proyecto para cumplir con la fecha de finalización.mpp)

Note of the change: Octavo Commit

Last finish 2014-03-28 → 2014-02-24 (-32d).

Changed:

| ID | Task | Start | Finish | Duration | Predecessors |
| --- | --- | --- | --- | --- | --- |
| 4 | TERMINOS DE REFERENCIA. Objetivos. Condicionantes del Promotor | 2013-04-01 → 2013-03-22 (-10d) | 2013-04-12 → 2013-04-04 (-8d) |  |  |
| 5 | FINANCIACION | 2013-04-01 → 2013-03-22 (-10d) | 2013-04-09 → 2013-04-01 (-8d) |  |  |
| 6 | COMITÉ DE COORDINACION. Constitución y organización | 2013-04-01 → 2013-03-22 (-10d) | 2013-04-05 → 2013-03-28 (-8d) |  |  |
| 7 | EQUIPO DE FORMULACION. Recursos humanos y técnicos | 2013-04-08 → 2013-03-29 (-10d) | 2013-04-30 → 2013-04-18 (-12d) | 17d → 15d | 4SS, 6 → 6, 5SS |
| 8 | METODOLOGIA Y PLAN DE TRABAJO | 2013-04-22 → 2013-04-15 (-7d) | 2013-05-03 → 2013-04-26 (-7d) |  |  |
| 9 | DOC. Nº1: Fin P.F. | 2013-05-06 → 2013-04-29 (-7d) | 2013-05-06 → 2013-04-29 (-7d) |  |  |
| 10 | Entrega al PROMOTOR. Doc. nº1 | 2013-05-13 → 2013-05-06 (-7d) | 2013-05-13 → 2013-05-06 (-7d) | 0d → 1d |  |
| 11 | SEMINARIO DE LANZAMIENTO DEL PROYECTO | 2013-05-13 → 2013-05-07 (-6d) | 2013-05-13 → 2013-05-07 (-6d) |  |  |
| 13 | **ANALISIS ANTECEDENTES** | 2013-05-14 → 2013-05-08 (-6d) | 2013-06-03 → 2013-05-28 (-6d) |  |  |
| 14 | POLITICAS Y PROGRAMAS | 2013-05-14 → 2013-05-08 (-6d) | 2013-06-05 → 2013-05-21 (-15d) | 17d → 10d |  |
| 15 | MARCO LEGAL | 2013-05-14 → 2013-05-08 (-6d) | 2013-06-03 → 2013-05-28 (-6d) |  |  |
| 16 | BASES DE DATOS EXISTENTES | 2013-05-14 → 2013-05-08 (-6d) | 2013-05-22 → 2013-05-16 (-6d) |  |  |
| 17 | **ANALISIS DEL AREA DEL PROYECTO** | 2013-05-23 → 2013-05-17 (-6d) | 2013-09-11 → 2013-09-05 (-6d) |  |  |
| 18 | ANALISIS DE RECURSOS NATURALES. INVENTARIO AMBIENTAL | 2013-03-31 → 2013-05-17 (+47d) |  | 63d → 35d |  |
| 19 | INFRAESTRUCTURAS Y SERVICIOS | 2013-05-17 → 2013-07-05 (+49d) | 2013-06-19 → 2013-08-01 (+43d) | 24d → 20d |  |
| 20 | ANALISIS DE SECTORES PRODUCTIVOS | 2013-06-14 → 2013-08-02 (+49d) | 2013-08-08 → 2013-09-05 (+28d) | 40d → 25d |  |
| 21 | ANALISIS POBLACIONAL | 2013-05-23 → 2013-05-17 (-6d) | 2013-06-19 → 2013-06-13 (-6d) |  |  |
| 22 | SISTEMA GENERAL TERRITORIAL DE INFORMACION | 2013-05-23 → 2013-05-17 (-6d) | 2013-06-25 → 2013-06-17 (-8d) | 24d → 22d |  |
| 24 | IDENTIFICACIÓN DE AGENTES Y TIPOLOGIA | 2013-05-30 → 2013-05-24 (-6d) | 2013-06-19 → 2013-06-06 (-13d) | 15d → 10d |  |
| 25 | ANALISIS DE LA PARTICIPACIÓN: ENCUESTA CON LOS AGENTES | 2013-06-13 → 2013-06-07 (-6d) | 2013-09-12 → 2013-08-29 (-14d) | 66d → 60d |  |
| 26 | TALLER DE PARTICIPACIÓN AGENTES PUBLICOS | 2013-06-06 → 2013-06-21 (+15d) | 2013-06-20 → 2013-06-21 (+1d) | 2d → 1d | 22SS+10d → 25SS+10d, 22SS+10d |
| 27 | ANALISIS PROSPECTIVO SIN | 2013-06-07 → 2013-06-24 (+17d) | 2013-06-14 → 2013-07-01 (+17d) |  |  |
| 28 | INFORME DE PARTICIPACION: Problemas, necesidades, oportunidades | 2013-09-05 → 2013-08-30 (-6d) | 2013-09-18 → 2013-09-12 (-6d) |  |  |
| 29 | PRESENTACIÓN Y VALIDACION DE CONCLUSIONES | 2013-09-19 → 2013-09-13 (-6d) | 2013-09-20 → 2013-09-16 (-4d) |  |  |
| 30 | CONCLUSIONES Y Doc. Nº2. Presentación al PROMOTOR | 2013-09-23 → 2013-09-17 (-6d) | 2013-09-23 → 2013-09-17 (-6d) |  |  |
| 31 | Doc. nº2. REVISIÓN POR EL PROMOTOR | 2013-09-23 → 2013-09-18 (-5d) | 2013-09-23 → 2013-09-18 (-5d) | 0d → 1d |  |
| 33 | OBJETIVOS Y METAS | 2013-09-23 → 2013-09-19 (-4d) | 2013-09-23 → 2013-09-19 (-4d) |  |  |
| 34 | ALTERNATIVA ESTRATEGICAS: ANÁLISIS Y SELECCIÓN | 2013-09-24 → 2013-09-20 (-4d) | 2013-10-02 → 2013-09-30 (-2d) |  |  |
| 35 | FORMULACION DE LOS COMPONENTES | 2013-10-03 → 2013-10-31 (+28d) |  | 60d → 40d |  |
| 40 | Doc. Nº 3. REVISION POR EL PROMOTOR | 2014-01-15 → 2014-01-16 (+1d) | 2014-01-28 → 2014-01-23 (-5d) | 10d → 6d |  |
| 42 | EVALUACION ECONOMICO-FINANCIERA | 2014-01-29 → 2014-01-24 (-5d) | 2014-02-11 → 2014-02-06 (-5d) |  |  |
| 43 | EVALUACION SOCIAL Y CULTURAL | 2014-01-29 → 2014-01-24 (-5d) | 2014-02-11 → 2014-02-06 (-5d) |  |  |
| 44 | EVALUACION AMBIENTAL | 2014-01-29 → 2014-01-24 (-5d) | 2014-02-11 → 2014-02-06 (-5d) |  |  |
| 45 | EVALUACION DE RIESGOS, SEGURIDAD Y SALUD DEL PROYECTO | 2014-01-29 → 2014-01-24 (-5d) | 2014-02-28 → 2014-02-06 (-22d) | 20d → 10d |  |
| 46 | Entrega Doc. nº 4. VIABILIDAD Y SOSTENIBLIDAD | 2014-02-12 → 2014-02-07 (-5d) | 2014-02-12 → 2014-02-07 (-5d) |  | 45 → 45, 42, 43, 44 |
| 47 | Revisión Doc. nº 4 | 2014-02-12 → 2014-02-10 (-2d) | 2014-02-18 → 2014-02-14 (-4d) |  | 42, 43, 44 → 46, 42, 43, 44 |
| 48 | **FASE 5: DOCUMENTACION** |  | 2013-04-11 → 2013-04-04 (-7d) | 15d → 10d |  |
| 49 | MEMORIA | 2014-02-19 → 2014-02-17 (-2d) | 2014-03-03 → 2014-02-21 (-10d) | 9d → 5d |  |
| 50 | ANEJOS A LA MEMORIA | 2014-02-19 → 2014-02-17 (-2d) | 2014-03-28 → 2014-02-21 (-35d) | 22d → 5d |  |
| 51 | PLANOS | 2014-02-19 → 2014-02-17 (-2d) | 2014-03-17 → 2014-02-21 (-24d) | 19d → 5d |  |
| 52 | PLIEGO DE CONDICIONES | 2014-02-19 → 2014-02-17 (-2d) | 2014-02-21 → 2014-02-19 (-2d) |  |  |
| 53 | PRESUPUESTO | 2014-02-19 → 2014-02-17 (-2d) | 2014-02-21 → 2014-02-19 (-2d) |  |  |
| 54 | ESTUDIO DE SEGURIDAD Y SALUD | 2014-02-19 → 2014-02-17 (-2d) | 2014-03-21 → 2014-02-21 (-28d) | 23d → 5d |  |
| 55 | Entrega del proyecto | 2014-03-05 → 2014-02-24 (-9d) | 2014-03-05 → 2014-02-24 (-9d) | 0d → 1d |  |

## Version 6 (data date 2013-03-22, saved 2013-05-01, file 7. Estimar los costes del proyecto.mpp)

Note of the change: Septimo Commit

Last finish 2014-02-24 → 2014-03-28 (+32d).

Changed:

| ID | Task | Start | Finish | Duration | Predecessors |
| --- | --- | --- | --- | --- | --- |
| 4 | TERMINOS DE REFERENCIA. Objetivos. Condicionantes del Promotor | 2013-03-22 → 2013-04-01 (+10d) | 2013-04-04 → 2013-04-12 (+8d) |  |  |
| 5 | FINANCIACION | 2013-03-22 → 2013-04-01 (+10d) | 2013-04-01 → 2013-04-09 (+8d) |  |  |
| 6 | COMITÉ DE COORDINACION. Constitución y organización | 2013-03-22 → 2013-04-01 (+10d) | 2013-03-28 → 2013-04-05 (+8d) |  |  |
| 7 | EQUIPO DE FORMULACION. Recursos humanos y técnicos | 2013-03-29 → 2013-04-08 (+10d) | 2013-04-18 → 2013-04-30 (+12d) | 15d → 17d | 6, 5SS → 4SS, 6 |
| 8 | METODOLOGIA Y PLAN DE TRABAJO | 2013-04-15 → 2013-04-22 (+7d) | 2013-04-26 → 2013-05-03 (+7d) |  |  |
| 9 | DOC. Nº1: Fin P.F. | 2013-04-29 → 2013-05-06 (+7d) | 2013-04-29 → 2013-05-06 (+7d) |  |  |
| 10 | Entrega al PROMOTOR. Doc. nº1 | 2013-05-06 → 2013-05-13 (+7d) | 2013-05-06 → 2013-05-13 (+7d) | 1d → 0d |  |
| 11 | SEMINARIO DE LANZAMIENTO DEL PROYECTO | 2013-05-07 → 2013-05-13 (+6d) | 2013-05-07 → 2013-05-13 (+6d) |  |  |
| 13 | **ANALISIS ANTECEDENTES** | 2013-05-08 → 2013-05-14 (+6d) | 2013-05-28 → 2013-06-03 (+6d) |  |  |
| 14 | POLITICAS Y PROGRAMAS | 2013-05-08 → 2013-05-14 (+6d) | 2013-05-21 → 2013-06-05 (+15d) | 10d → 17d |  |
| 15 | MARCO LEGAL | 2013-05-08 → 2013-05-14 (+6d) | 2013-05-28 → 2013-06-03 (+6d) |  |  |
| 16 | BASES DE DATOS EXISTENTES | 2013-05-08 → 2013-05-14 (+6d) | 2013-05-16 → 2013-05-22 (+6d) |  |  |
| 17 | **ANALISIS DEL AREA DEL PROYECTO** | 2013-05-17 → 2013-05-23 (+6d) | 2013-09-05 → 2013-09-11 (+6d) |  |  |
| 18 | ANALISIS DE RECURSOS NATURALES. INVENTARIO AMBIENTAL | 2013-05-17 → 2013-03-31 (-47d) |  | 35d → 63d |  |
| 19 | INFRAESTRUCTURAS Y SERVICIOS | 2013-07-05 → 2013-05-17 (-49d) | 2013-08-01 → 2013-06-19 (-43d) | 20d → 24d |  |
| 20 | ANALISIS DE SECTORES PRODUCTIVOS | 2013-08-02 → 2013-06-14 (-49d) | 2013-09-05 → 2013-08-08 (-28d) | 25d → 40d |  |
| 21 | ANALISIS POBLACIONAL | 2013-05-17 → 2013-05-23 (+6d) | 2013-06-13 → 2013-06-19 (+6d) |  |  |
| 22 | SISTEMA GENERAL TERRITORIAL DE INFORMACION | 2013-05-17 → 2013-05-23 (+6d) | 2013-06-17 → 2013-06-25 (+8d) | 22d → 24d |  |
| 24 | IDENTIFICACIÓN DE AGENTES Y TIPOLOGIA | 2013-05-24 → 2013-05-30 (+6d) | 2013-06-06 → 2013-06-19 (+13d) | 10d → 15d |  |
| 25 | ANALISIS DE LA PARTICIPACIÓN: ENCUESTA CON LOS AGENTES | 2013-06-07 → 2013-06-13 (+6d) | 2013-08-29 → 2013-09-12 (+14d) | 60d → 66d |  |
| 26 | TALLER DE PARTICIPACIÓN AGENTES PUBLICOS | 2013-06-21 → 2013-06-06 (-15d) | 2013-06-21 → 2013-06-20 (-1d) | 1d → 2d | 25SS+10d, 22SS+10d → 22SS+10d |
| 27 | ANALISIS PROSPECTIVO SIN | 2013-06-24 → 2013-06-07 (-17d) | 2013-07-01 → 2013-06-14 (-17d) |  |  |
| 28 | INFORME DE PARTICIPACION: Problemas, necesidades, oportunidades | 2013-08-30 → 2013-09-05 (+6d) | 2013-09-12 → 2013-09-18 (+6d) |  |  |
| 29 | PRESENTACIÓN Y VALIDACION DE CONCLUSIONES | 2013-09-13 → 2013-09-19 (+6d) | 2013-09-16 → 2013-09-20 (+4d) |  |  |
| 30 | CONCLUSIONES Y Doc. Nº2. Presentación al PROMOTOR | 2013-09-17 → 2013-09-23 (+6d) | 2013-09-17 → 2013-09-23 (+6d) |  |  |
| 31 | Doc. nº2. REVISIÓN POR EL PROMOTOR | 2013-09-18 → 2013-09-23 (+5d) | 2013-09-18 → 2013-09-23 (+5d) | 1d → 0d |  |
| 33 | OBJETIVOS Y METAS | 2013-09-19 → 2013-09-23 (+4d) | 2013-09-19 → 2013-09-23 (+4d) |  |  |
| 34 | ALTERNATIVA ESTRATEGICAS: ANÁLISIS Y SELECCIÓN | 2013-09-20 → 2013-09-24 (+4d) | 2013-09-30 → 2013-10-02 (+2d) |  |  |
| 35 | FORMULACION DE LOS COMPONENTES | 2013-10-31 → 2013-10-03 (-28d) |  | 40d → 60d |  |
| 40 | Doc. Nº 3. REVISION POR EL PROMOTOR | 2014-01-16 → 2014-01-15 (-1d) | 2014-01-23 → 2014-01-28 (+5d) | 6d → 10d |  |
| 42 | EVALUACION ECONOMICO-FINANCIERA | 2014-01-24 → 2014-01-29 (+5d) | 2014-02-06 → 2014-02-11 (+5d) |  |  |
| 43 | EVALUACION SOCIAL Y CULTURAL | 2014-01-24 → 2014-01-29 (+5d) | 2014-02-06 → 2014-02-11 (+5d) |  |  |
| 44 | EVALUACION AMBIENTAL | 2014-01-24 → 2014-01-29 (+5d) | 2014-02-06 → 2014-02-11 (+5d) |  |  |
| 45 | EVALUACION DE RIESGOS, SEGURIDAD Y SALUD DEL PROYECTO | 2014-01-24 → 2014-01-29 (+5d) | 2014-02-06 → 2014-02-28 (+22d) | 10d → 20d |  |
| 46 | Entrega Doc. nº 4. VIABILIDAD Y SOSTENIBLIDAD | 2014-02-07 → 2014-02-12 (+5d) | 2014-02-07 → 2014-02-12 (+5d) |  | 45, 42, 43, 44 → 45 |
| 47 | Revisión Doc. nº 4 | 2014-02-10 → 2014-02-12 (+2d) | 2014-02-14 → 2014-02-18 (+4d) |  | 46, 42, 43, 44 → 42, 43, 44 |
| 48 | **FASE 5: DOCUMENTACION** |  | 2013-04-04 → 2013-04-11 (+7d) | 10d → 15d |  |
| 49 | MEMORIA | 2014-02-17 → 2014-02-19 (+2d) | 2014-02-21 → 2014-03-03 (+10d) | 5d → 9d |  |
| 50 | ANEJOS A LA MEMORIA | 2014-02-17 → 2014-02-19 (+2d) | 2014-02-21 → 2014-03-28 (+35d) | 5d → 22d |  |
| 51 | PLANOS | 2014-02-17 → 2014-02-19 (+2d) | 2014-02-21 → 2014-03-17 (+24d) | 5d → 19d |  |
| 52 | PLIEGO DE CONDICIONES | 2014-02-17 → 2014-02-19 (+2d) | 2014-02-19 → 2014-02-21 (+2d) |  |  |
| 53 | PRESUPUESTO | 2014-02-17 → 2014-02-19 (+2d) | 2014-02-19 → 2014-02-21 (+2d) |  |  |
| 54 | ESTUDIO DE SEGURIDAD Y SALUD | 2014-02-17 → 2014-02-19 (+2d) | 2014-02-21 → 2014-03-21 (+28d) | 5d → 23d |  |
| 55 | Entrega del proyecto | 2014-02-24 → 2014-03-05 (+9d) | 2014-02-24 → 2014-03-05 (+9d) | 1d → 0d |  |

## Version 7 (data date 2013-03-22, saved 2013-05-04, file 9. Optimizar el plan del proyecto para los recursos.mpp)

Note of the change: Noveno Commit

Last finish 2014-03-28 → 2014-02-24 (-32d).

Changed:

| ID | Task | Start | Finish | Duration | Predecessors | Other |
| --- | --- | --- | --- | --- | --- | --- |
| 4 | TERMINOS DE REFERENCIA. Objetivos. Condicionantes del Promotor | 2013-04-01 → 2013-03-22 (-10d) | 2013-04-12 → 2013-04-04 (-8d) |  |  | resources DIRECTOR PROYECTO [25%]; ECONOMISTA [50%]; INGENIERO AGRONOMO [25%]; SOCIOLOGO [25%]; INGENIERO EN MEDIOAMBIENTE [25%] → DIRECTOR PROYECTO [25%]; ECONOMISTA [50%]; INGENIERO AGRONOMO [25%]; INGENIERO EN MEDIOAMBIENTE [25%]; SOCIOLOGO [25%] |
| 5 | FINANCIACION | 2013-04-01 → 2013-03-22 (-10d) | 2013-04-09 → 2013-04-01 (-8d) |  |  |  |
| 6 | COMITÉ DE COORDINACION. Constitución y organización | 2013-04-01 → 2013-03-25 (-7d) | 2013-04-05 → 2013-03-29 (-7d) |  |  |  |
| 7 | EQUIPO DE FORMULACION. Recursos humanos y técnicos | 2013-04-08 → 2013-04-01 (-7d) | 2013-04-30 → 2013-04-12 (-18d) | 17d → 10d | 4SS, 6 → 6, 5SS |  |
| 8 | METODOLOGIA Y PLAN DE TRABAJO | 2013-04-22 → 2013-04-15 (-7d) | 2013-05-03 → 2013-04-26 (-7d) |  |  |  |
| 9 | DOC. Nº1: Fin P.F. | 2013-05-06 → 2013-04-29 (-7d) | 2013-05-06 → 2013-04-29 (-7d) |  |  |  |
| 10 | Entrega al PROMOTOR. Doc. nº1 | 2013-05-13 → 2013-05-06 (-7d) | 2013-05-13 → 2013-05-06 (-7d) | 0d → 1d |  |  |
| 11 | SEMINARIO DE LANZAMIENTO DEL PROYECTO | 2013-05-13 → 2013-05-07 (-6d) | 2013-05-13 → 2013-05-07 (-6d) |  |  |  |
| 13 | **ANALISIS ANTECEDENTES** | 2013-05-14 → 2013-05-08 (-6d) | 2013-06-03 → 2013-05-28 (-6d) |  |  |  |
| 14 | POLITICAS Y PROGRAMAS | 2013-05-14 → 2013-05-08 (-6d) | 2013-06-05 → 2013-05-21 (-15d) | 17d → 10d |  |  |
| 15 | MARCO LEGAL | 2013-05-14 → 2013-05-08 (-6d) | 2013-06-03 → 2013-05-27 (-7d) | 15d → 10d |  |  |
| 16 | BASES DE DATOS EXISTENTES | 2013-05-14 → 2013-05-08 (-6d) | 2013-05-22 → 2013-05-16 (-6d) |  |  |  |
| 17 | **ANALISIS DEL AREA DEL PROYECTO** | 2013-05-23 → 2013-05-17 (-6d) | 2013-09-11 → 2013-09-05 (-6d) |  | 11, 16 → 16 |  |
| 18 | ANALISIS DE RECURSOS NATURALES. INVENTARIO AMBIENTAL | 2013-03-31 → 2013-05-17 (+47d) |  | 63d → 35d |  |  |
| 19 | INFRAESTRUCTURAS Y SERVICIOS | 2013-05-17 → 2013-07-05 (+49d) | 2013-06-19 → 2013-08-08 (+50d) | 24d → 20d |  |  |
| 20 | ANALISIS DE SECTORES PRODUCTIVOS | 2013-06-14 → 2013-08-09 (+56d) | 2013-08-08 → 2013-09-05 (+28d) | 40d → 20d |  |  |
| 21 | ANALISIS POBLACIONAL | 2013-05-23 → 2013-05-17 (-6d) | 2013-06-19 → 2013-06-13 (-6d) |  |  |  |
| 22 | SISTEMA GENERAL TERRITORIAL DE INFORMACION | 2013-05-23 → 2013-05-17 (-6d) | 2013-06-25 → 2013-08-14 (+50d) | 24d → 22d |  |  |
| 24 | IDENTIFICACIÓN DE AGENTES Y TIPOLOGIA | 2013-05-30 → 2013-05-24 (-6d) | 2013-06-19 → 2013-06-07 (-12d) | 15d → 10d |  |  |
| 25 | ANALISIS DE LA PARTICIPACIÓN: ENCUESTA CON LOS AGENTES | 2013-06-13 → 2013-06-10 (-3d) | 2013-09-12 → 2013-07-05 (-69d) | 66d → 20d |  |  |
| 26 | TALLER DE PARTICIPACIÓN AGENTES PUBLICOS | 2013-06-06 → 2013-06-24 (+18d) | 2013-06-20 → 2013-06-24 (+4d) | 2d → 1d | 22SS+10d → 25SS+10d |  |
| 27 | ANALISIS PROSPECTIVO SIN | 2013-06-07 → 2013-06-28 (+21d) | 2013-06-14 → 2013-07-23 (+39d) | 6d → 10d |  |  |
| 28 | INFORME DE PARTICIPACION: Problemas, necesidades, oportunidades | 2013-09-05 → 2013-08-30 (-6d) | 2013-09-18 → 2013-09-12 (-6d) |  |  |  |
| 29 | PRESENTACIÓN Y VALIDACION DE CONCLUSIONES | 2013-09-19 → 2013-09-13 (-6d) | 2013-09-20 → 2013-09-16 (-4d) |  |  |  |
| 30 | CONCLUSIONES Y Doc. Nº2. Presentación al PROMOTOR | 2013-09-23 → 2013-09-17 (-6d) | 2013-09-23 → 2013-09-17 (-6d) |  |  |  |
| 31 | Doc. nº2. REVISIÓN POR EL PROMOTOR | 2013-09-23 → 2013-09-18 (-5d) | 2013-09-23 → 2013-09-18 (-5d) | 0d → 1d | 29, 30 → 30 |  |
| 33 | OBJETIVOS Y METAS | 2013-09-23 → 2013-09-19 (-4d) | 2013-09-23 → 2013-09-19 (-4d) |  |  |  |
| 34 | ALTERNATIVA ESTRATEGICAS: ANÁLISIS Y SELECCIÓN | 2013-09-24 → 2013-09-20 (-4d) | 2013-10-02 → 2013-09-30 (-2d) |  |  |  |
| 35 | FORMULACION DE LOS COMPONENTES | 2013-10-03 → 2013-10-31 (+28d) |  | 60d → 40d |  |  |
| 37 | SISTEMA DE SEGUIMIENTO Y EVALUACION. Programación de la ejecución. |  |  |  | 26, 35 → 35 |  |
| 38 | PRESUPUESTACION |  |  |  | 35, 36 → 36 |  |
| 40 | Doc. Nº 3. REVISION POR EL PROMOTOR | 2014-01-15 → 2014-01-16 (+1d) | 2014-01-28 → 2014-01-23 (-5d) | 10d → 6d |  |  |
| 42 | EVALUACION ECONOMICO-FINANCIERA | 2014-01-29 → 2014-01-24 (-5d) | 2014-02-11 → 2014-02-06 (-5d) |  |  | resources DIRECTOR PROYECTO [25%]; ECONOMISTA [50%]; INGENIERO AGRONOMO → DIRECTOR PROYECTO [25%]; ECONOMISTA; INGENIERO AGRONOMO [50%]; SOCIOLOGO |
| 43 | EVALUACION SOCIAL Y CULTURAL | 2014-01-29 → 2014-01-24 (-5d) | 2014-02-11 → 2014-02-06 (-5d) |  |  |  |
| 44 | EVALUACION AMBIENTAL | 2014-01-29 → 2014-01-24 (-5d) | 2014-02-11 → 2014-02-06 (-5d) |  |  |  |
| 45 | EVALUACION DE RIESGOS, SEGURIDAD Y SALUD DEL PROYECTO | 2014-01-29 → 2014-01-24 (-5d) | 2014-02-28 → 2014-02-06 (-22d) | 20d → 10d |  |  |
| 46 | Entrega Doc. nº 4. VIABILIDAD Y SOSTENIBLIDAD | 2014-02-12 → 2014-02-07 (-5d) | 2014-02-12 → 2014-02-07 (-5d) |  |  |  |
| 47 | Revisión Doc. nº 4 | 2014-02-12 → 2014-02-10 (-2d) | 2014-02-18 → 2014-02-14 (-4d) |  | 42, 43, 44 → 46 |  |
| 48 | **FASE 5: DOCUMENTACION** |  | 2013-04-11 → 2013-04-04 (-7d) | 15d → 10d |  |  |
| 49 | MEMORIA | 2014-02-19 → 2014-02-17 (-2d) | 2014-03-03 → 2014-02-21 (-10d) | 9d → 5d |  |  |
| 50 | ANEJOS A LA MEMORIA | 2014-02-19 → 2014-02-17 (-2d) | 2014-03-28 → 2014-02-21 (-35d) | 22d → 5d |  |  |
| 51 | PLANOS | 2014-02-19 → 2014-02-17 (-2d) | 2014-03-17 → 2014-02-21 (-24d) | 19d → 5d |  |  |
| 52 | PLIEGO DE CONDICIONES | 2014-02-19 → 2014-02-17 (-2d) | 2014-02-21 → 2014-02-20 (-1d) |  |  |  |
| 53 | PRESUPUESTO | 2014-02-19 → 2014-02-17 (-2d) | 2014-02-21 → 2014-02-19 (-2d) |  |  |  |
| 54 | ESTUDIO DE SEGURIDAD Y SALUD |  | 2014-03-21 → 2014-02-21 (-28d) | 23d → 2d |  |  |
| 55 | Entrega del proyecto | 2014-03-05 → 2014-02-24 (-9d) | 2014-03-05 → 2014-02-24 (-9d) | 0d → 1d |  |  |
